Schedule from OmniPlan, 2017-12-19 to 2017-12-21.
Project start 2017-12-18

## Resources

| Resource | Group |
| --- | --- |
| 资源 1 | staff |
| 设备 1 | equipment |
| 素材 1 | material |
| 群组 1 | group |
| 贾东坡 | staff |
| 黎杰 | staff |
| 孟详龙 | staff |
| 周游 | staff |

## Schedule

| ID | WBS | Task | Start | Complete | Constraint | Resources | Work | Actual work |
| --- | --- | --- | --- | --- | --- | --- | --- | --- |
| 1 | 1 | **设计** |  |  |  |  |  |  |
| 2 | 1.1 | **数据库设计** |  |  |  |  |  |  |
| 3 | 1.1.1 | 权限、人员、组 | 2017-12-21 |  |  | 贾东坡 | 4h |  |
| 4 | 1.1.2 | 工单基础信息表 | 2017-12-19 |  | start no earlier than 2017-12-19 |  | 8h |  |
| 5 | 1.1.3 | 工单应用信息表 | 2017-12-21 | 80% |  | 贾东坡 | 1h | 0.8h |
| 6 | 1.1.4 | 工单流转信息表 | 2017-12-21 | 80% |  | 贾东坡 | 1h | 0.8h |
| 7 | 1.1.5 | 工单流转日志表 | 2017-12-19 |  | start no earlier than 2017-12-19 |  | 8h |  |
| 8 | 1.1.6 | 关闭工单评价表 | 2017-12-19 |  | start no earlier than 2017-12-19 |  | 8h |  |
| 9 | 1.2 | **功能设计** |  |  | finish no later than 2017-12-20 |  |  |  |
| 10 | 1.2.1 | 业务、审批人、处理人权限与角色 | 2017-12-20 | 100% |  | 贾东坡 | 1h | 1h |
| 11 | 1.2.2 | 元素 | 2017-12-19 |  | start no earlier than 2017-12-19 |  | 8h |  |
| 12 | 1.2.3 | 复制功能 | 2017-12-19 |  | start no earlier than 2017-12-19 |  | 8h |  |
| 13 | 1.2.4 | 工单搜索 | 2017-12-19 |  | start no earlier than 2017-12-19 |  | 8h |  |
| 14 | 1.2.5 | 工单进度显示 | 2017-12-19 |  | start no earlier than 2017-12-19 |  | 8h |  |
| 15 | 1.2.6 | 任务提醒、通知实现 | 2017-12-19 |  | start no earlier than 2017-12-19 |  | 8h |  |
| 16 | 1.2.7 | 附件上传 | 2017-12-19 |  | start no earlier than 2017-12-19 |  | 8h |  |
| 17 | 1.2.8 | 附件下载 | 2017-12-19 |  | start no earlier than 2017-12-19 |  | 8h |  |
| 18 | 1.3 | 业务流程设计 | 2017-12-20 | 67% |  | 贾东坡 | 24h | 16h |
| 19 | 1.4 | **界面设计** |  |  |  |  |  |  |
| 20 | 1.4.1 | 创建工单 | 2017-12-21 | 100% |  | 贾东坡 | 4h | 4h |
| 21 | 1.4.2 | 保存工单 | 2017-12-21 | 100% |  | 贾东坡 | 4h | 4h |
| 22 | 1.4.3 | 修改工单 | 2017-12-21 | 100% |  | 贾东坡 | 4h | 4h |
| 23 | 1.4.4 | 提交工单 | 2017-12-21 | 100% |  | 贾东坡 | 4h | 4h |
| 24 | 1.4.5 | 复制工单 | 2017-12-21 | 100% |  | 贾东坡 | 4h | 4h |
| 25 | 1.4.6 | 关闭工单 | 2017-12-21 | 100% |  | 贾东坡 | 4h | 4h |
| 26 | 1.4.7 | 查询工单 | 2017-12-21 | 100% |  | 贾东坡 | 4h | 4h |
| 27 | 1.4.8 | 处理工单 | 2017-12-21 | 100% |  | 贾东坡 | 4h | 4h |
| 28 | 1.4.9 | 处理反馈工单 | 2017-12-21 | 100% |  | 贾东坡 | 4h | 4h |
| 29 | 1.4.10 | 系统审批工单 | 2017-12-21 | 100% |  | 贾东坡 | 4h | 4h |
| 30 | 1.4.11 | 邮件审批工单 | 2017-12-21 | 100% |  | 贾东坡 | 4h | 4h |

| ID | WBS | Task | Start | Complete | Work | Actual work |
| --- | --- | --- | --- | --- | --- | --- |
| 31 | 2 | **开发** |  |  |  |  |
| 32 | 2.1 | 创建工单 | 2017-12-21 | 100% | 4h | 4h |
| 33 | 2.2 | 保存工单 | 2017-12-21 | 100% | 4h | 4h |
| 34 | 2.3 | 修改工单 | 2017-12-21 | 100% | 4h | 4h |
| 35 | 2.4 | 提交工单 | 2017-12-21 | 100% | 4h | 4h |
| 36 | 2.5 | 复制工单 | 2017-12-21 | 100% | 4h | 4h |
| 37 | 2.6 | 关闭工单 | 2017-12-21 | 100% | 4h | 4h |
| 38 | 2.7 | 查询工单 | 2017-12-21 | 100% | 4h | 4h |
| 39 | 2.8 | 处理工单 | 2017-12-21 | 100% | 4h | 4h |
| 40 | 2.9 | 处理反馈工单 | 2017-12-21 | 100% | 4h | 4h |
| 41 | 2.10 | 系统审批工单 | 2017-12-21 | 100% | 4h | 4h |
| 42 | 2.11 | 邮件审批工单 | 2017-12-21 | 100% | 4h | 4h |
